| id | wbs | name | duration | workstream | baselineStart | baselineFinish | totalSlackDays | critical | predecessors | relationships |
| --- | --- | --- | --- | --- | --- | --- | --- | --- | --- | --- |
| PREL-010 | 1.1 | Notice to Proceed | 0.0 | Preliminaries | 2025-10-01 | 2025-10-01 | 0.0 | True |  |  |
| PREL-020 | 1.2 | Mobilization & Temporary Facilities | 20.0 | Preliminaries | 2025-10-01 | 2025-10-23 | 0.0 | True | PREL-010 | FS |
| PREL-030 | 1.3 | Survey / Setting Out | 15.0 | Preliminaries | 2025-10-07 | 2025-10-23 | 0.0 | True | PREL-020 | SS+5d |
| DES-010 | 2.1 | Review IFC Drawings / Interfaces | 30.0 | Design & Procurement | 2025-10-01 | 2025-11-04 | 64.0 |  | PREL-010 | FS |
| DES-020 | 2.2 | Method Statements & Material Submittals | 45.0 | Design & Procurement | 2025-10-13 | 2025-12-03 | 64.0 |  | DES-010 | SS+10d |
| PROC-010 | 2.3 | Long-Lead M&E Procurement | 300.0 | Design & Procurement | 2025-12-04 | 2026-11-18 | 64.0 |  | DES-020 | FS |
| PROC-020 | 2.4 | SCADA / Instrumentation Procurement | 260.0 | Design & Procurement | 2025-12-04 | 2026-10-02 | 204.0 |  | DES-020 | FS |
| PROC-030 | 2.5 | Electrical / Receiving Equipment Procurement | 240.0 | Design & Procurement | 2025-12-04 | 2026-09-09 | 124.0 |  | DES-020 | FS |
| WTP-CIV-010 | 3.1 | Site Clearing / Excavation / Dewatering | 35.0 | Chinaimo WTP | 2025-10-24 | 2025-12-03 | 0.0 | True | PREL-030 | FS |
| WTP-CIV-020 | 3.2 | Ground Preparation / Blinding | 15.0 | Chinaimo WTP | 2025-12-04 | 2025-12-20 | 0.0 | True | WTP-CIV-010 | FS |
| WTP-CIV-030 | 3.3 | WTP Foundations / Base Slabs | 60.0 | Chinaimo WTP | 2025-12-22 | 2026-02-28 | 0.0 | True | WTP-CIV-020 | FS |
| WTP-CIV-040 | 3.4 | Mixing / Flocculation Basin RC Works | 70.0 | Chinaimo WTP | 2026-03-02 | 2026-05-21 | 0.0 | True | WTP-CIV-030 | FS |
| WTP-CIV-050 | 3.5 | Sedimentation Basin RC Works | 100.0 | Chinaimo WTP | 2026-03-25 | 2026-07-18 | 0.0 | True | WTP-CIV-040 | SS+20d |
| WTP-CIV-060 | 3.6 | Rapid Sand Filter Structure | 80.0 | Chinaimo WTP | 2026-07-20 | 2026-10-20 | 0.0 | True | WTP-CIV-050 | FS |
| WTP-CIV-070 | 3.7 | Internal Channels / Pipe Galleries | 45.0 | Chinaimo WTP | 2026-10-21 | 2026-12-11 | 0.0 | True | WTP-CIV-060 | FS |
| WTP-CIV-080 | 3.8 | Waterproofing / Protective Coating | 30.0 | Chinaimo WTP | 2026-12-12 | 2027-01-15 | 0.0 | True | WTP-CIV-070 | FS |
| WTP-CIV-090 | 3.9 | Hydrostatic / Structural Water Test | 14.0 | Chinaimo WTP | 2027-01-16 | 2027-02-01 | 0.0 | True | WTP-CIV-080 | FS |
| RES-010 | 4.1 | 10,000 mÂ³ Reservoir Excavation | 40.0 | Chinaimo Reservoir | 2025-10-24 | 2025-12-09 | 330.0 |  | PREL-030 | FS |
| RES-020 | 4.2 | Reservoir Foundation / Base Slab | 60.0 | Chinaimo Reservoir | 2025-12-10 | 2026-02-17 | 330.0 |  | RES-010 | FS |
| RES-030 | 4.3 | Reservoir Walls / Columns | 100.0 | Chinaimo Reservoir | 2026-02-18 | 2026-06-13 | 330.0 |  | RES-020 | FS |
| RES-040 | 4.4 | Reservoir Roof Slab | 60.0 | Chinaimo Reservoir | 2026-06-15 | 2026-08-22 | 330.0 |  | RES-030 | FS |
| RES-050 | 4.5 | Reservoir Waterproofing / Coating | 30.0 | Chinaimo Reservoir | 2026-08-24 | 2026-09-26 | 330.0 |  | RES-040 | FS |
| RES-060 | 4.6 | Reservoir Hydrostatic Test | 14.0 | Chinaimo Reservoir | 2026-09-28 | 2026-10-13 | 330.0 |  | RES-050 | FS |
| BLDG-010 | 5.1 | Pump Room Civil / Structural Works | 75.0 | Buildings | 2026-01-14 | 2026-04-10 | 254.0 |  | WTP-CIV-030 | SS+20d |
| BLDG-020 | 5.2 | Chemical Building Civil / Architectural | 90.0 | Buildings | 2026-01-26 | 2026-05-09 | 349.0 |  | WTP-CIV-030 | SS+30d |
| BLDG-030 | 5.3 | Administration & Laboratory Building | 120.0 | Buildings | 2025-12-04 | 2026-04-22 | 499.0 |  | WTP-CIV-010 | FS |
| BLDG-040 | 5.4 | Building MEP / Architectural Finishes | 70.0 | Buildings | 2026-04-23 | 2026-07-13 | 499.0 |  | BLDG-030 | FS |
| ME-010 | 6.1 | Process Piping Installation | 100.0 | Process M&E | 2027-02-02 | 2027-05-28 | 0.0 | True | WTP-CIV-090;PROC-010 | FS;FS |
| ME-020 | 6.2 | Pumps & Mechanical Equipment Installation | 90.0 | Process M&E | 2026-11-19 | 2027-03-03 | 164.0 |  | BLDG-010;PROC-010 | FS;FS |
| ME-030 | 6.3 | Chemical Dosing Equipment Installation | 70.0 | Process M&E | 2026-11-19 | 2027-02-08 | 184.0 |  | BLDG-020;PROC-010 | FS;FS |
| ME-040 | 6.4 | Filter Media / Underdrain Equipment | 50.0 | Process M&E | 2027-02-02 | 2027-03-31 | 140.0 |  | WTP-CIV-090;PROC-010 | FS;FS |
| ME-050 | 6.5 | Electrical Installation / MCC / Cabling | 100.0 | Process M&E | 2026-09-10 | 2027-01-04 | 124.0 |  | BLDG-010;PROC-030 | FS;FS |
| ME-060 | 6.6 | Instrumentation & SCADA Installation | 90.0 | Process M&E | 2027-05-29 | 2027-09-10 | 0.0 | True | ME-010;ME-050;PROC-020 | FS;FS;FS |
| SAL-010 | 7.1 | Salakham Site Preparation / Excavation | 40.0 | Salakham | 2025-10-24 | 2025-12-09 | 334.0 |  | PREL-030 | FS |
| SAL-020 | 7.2 | 7,100 mÂ³ Reservoir RC Works | 180.0 | Salakham | 2025-12-10 | 2026-07-07 | 334.0 |  | SAL-010 | FS |
| SAL-030 | 7.3 | Salakham Pump Room | 90.0 | Salakham | 2025-11-28 | 2026-03-12 | 434.0 |  | SAL-010 | SS+30d |
| SAL-040 | 7.4 | Salakham M&E Installation | 80.0 | Salakham | 2026-11-19 | 2027-02-19 | 219.0 |  | SAL-020;SAL-030;PROC-010 | FS;FS;FS |
| PWR-010 | 8.1 | 22-kV Route Survey / Permits | 45.0 | Power | 2025-10-24 | 2025-12-15 | 294.0 |  | PREL-020 | FS |
| PWR-020 | 8.2 | Pole / Foundation Works | 100.0 | Power | 2025-12-16 | 2026-04-10 | 294.0 |  | PWR-010 | FS |
| PWR-030 | 8.3 | 22-kV Line Installation | 120.0 | Power | 2026-04-11 | 2026-08-28 | 294.0 |  | PWR-020 | FS |
| PWR-040 | 8.4 | Receiving Equipment / Energization | 30.0 | Power | 2026-09-10 | 2026-10-14 | 284.0 |  | PWR-030;PROC-030 | FS;FS |
| COMM-010 | 9.1 | Mechanical Pre-Commissioning | 25.0 | Commissioning | 2027-05-29 | 2027-06-26 | 90.0 |  | ME-010;ME-020;ME-030;ME-040 | FS;FS;FS;FS |
| COMM-020 | 9.2 | Electrical / I&C Pre-Commissioning | 25.0 | Commissioning | 2027-09-11 | 2027-10-09 | 0.0 | True | ME-060;PWR-040 | FS;FS |
| COMM-030 | 9.3 | Dry Commissioning | 20.0 | Commissioning | 2027-10-11 | 2027-11-02 | 0.0 | True | COMM-010;COMM-020 | FS;FS |
| COMM-040 | 9.4 | Wet Commissioning / Process Start-Up | 30.0 | Commissioning | 2027-11-03 | 2027-12-07 | 0.0 | True | COMM-030;RES-060;SAL-040 | FS;FS;FS |
| COMM-050 | 9.5 | Performance / Water Quality Testing | 30.0 | Commissioning | 2027-12-08 | 2028-01-11 | 0.0 | True | COMM-040 | FS |
| COMM-060 | 9.6 | Punch List / Rectification | 30.0 | Commissioning | 2028-01-12 | 2028-02-15 | 0.0 | True | COMM-050 | FS |
| COMM-070 | 9.7 | Training / O&M Documents | 20.0 | Commissioning | 2027-11-03 | 2027-11-25 | 70.0 |  | COMM-040 | SS |
| COMM-080 | 9.8 | Taking Over / Completion Milestone | 0.0 | Commissioning | 2028-02-15 | 2028-02-15 | 0.0 | True | COMM-060;COMM-070;BLDG-040 | FS;FS;FS |
