# Michael_Futol_Chinaimo_Actual_Progress

Schedule from MS Project, 2025-10-01 to 2028-06-23, status date 2026-08-31, A marks actual dates.
Original Assessment Baseline Rev 0. Public anchors only; detailed logic/durations are assessment-derived. No confidential Kubota programme is represented. / Current assessment model at 31-Aug-2026. 12.095% BOQ-weighted progress is simulated; public checkpoint remains 4.19% at 05-May-2026. Native CPM governs forecast.

## Calendars

- Standard: Mon-Sat 08:00-12:00, 13:00-17:00; Sun off.

## Schedule

| ID | Task | Type | Duration | Start | Finish | Predecessors | Complete | Remaining | Baseline start | Baseline finish | Baseline duration | Total slack | Free slack | Constraint | Text1 | Text2 | Text3 | Text4 |
| --- | --- | --- | --- | --- | --- | --- | --- | --- | --- | --- | --- | --- | --- | --- | --- | --- | --- | --- |
| 1 | Notice to Proceed | milestone | 0d | 2025-10-01 A | 2025-10-01 A |  | 100% |  | 2025-10-01 | 2025-10-01 | 0d |  |  |  | PREL-010 | 1.1 | Preliminaries | ASSESSMENT STATUS @ 31-AUG-2026 - NOT KUBOTA ACTUAL |
| 2 | Mobilization & Temporary Facilities |  | 20d | 2025-10-01 A | 2025-10-23 A | 1 | 100% |  | 2025-10-01 | 2025-10-23 | 20d |  |  |  | PREL-020 | 1.2 | Preliminaries | ASSESSMENT STATUS @ 31-AUG-2026 - NOT KUBOTA ACTUAL |
| 3 | Survey / Setting Out |  | 15d | 2025-10-07 A | 2025-10-23 A | 2SS+5d | 100% |  | 2025-10-07 | 2025-10-23 | 15d |  |  |  | PREL-030 | 1.3 | Preliminaries | ASSESSMENT STATUS @ 31-AUG-2026 - NOT KUBOTA ACTUAL |
| 4 | Review IFC Drawings / Interfaces |  | 30d | 2025-10-01 A | 2025-11-04 A | 1 | 100% |  | 2025-10-01 | 2025-11-04 | 30d |  |  |  | DES-010 | 2.1 | Design & Procurement | ASSESSMENT STATUS @ 31-AUG-2026 - NOT KUBOTA ACTUAL |
| 5 | Method Statements & Material Submittals |  | 45d | 2025-10-13 A | 2026-09-04 | 4SS+10d | 90% | 4.5d | 2025-10-13 | 2025-12-03 | 45d | 0d |  |  | DES-020 | 2.2 | Design & Procurement | ASSESSMENT STATUS @ 31-AUG-2026 - NOT KUBOTA ACTUAL |
| 6 | Long-Lead M&E Procurement |  | 300d | 2025-12-04 A | 2027-03-16 | 5 | 45% | 165d | 2025-12-04 | 2026-11-18 | 300d | 74.5d | 0d |  | PROC-010 | 2.3 | Design & Procurement | ASSESSMENT STATUS @ 31-AUG-2026 - NOT KUBOTA ACTUAL |
| 7 | SCADA / Instrumentation Procurement |  | 260d | 2025-12-04 A | 2027-03-05 | 5 | 40% | 156d | 2025-12-04 | 2026-10-02 | 260d | 183.5d |  |  | PROC-020 | 2.4 | Design & Procurement | ASSESSMENT STATUS @ 31-AUG-2026 - NOT KUBOTA ACTUAL |
| 8 | Electrical / Receiving Equipment Procurement |  | 240d | 2025-12-04 A | 2027-01-08 | 5 | 55% | 108d | 2025-12-04 | 2026-09-09 | 240d | 131.5d | 0d |  | PROC-030 | 2.5 | Design & Procurement | ASSESSMENT STATUS @ 31-AUG-2026 - NOT KUBOTA ACTUAL |
| 9 | Site Clearing / Excavation / Dewatering |  | 35d | 2025-10-24 A | 2025-12-03 A | 3 | 100% |  | 2025-10-24 | 2025-12-03 | 35d |  |  |  | WTP-CIV-010 | 3.1 | Chinaimo WTP | ASSESSMENT STATUS @ 31-AUG-2026 - NOT KUBOTA ACTUAL |
| 10 | Ground Preparation / Blinding |  | 15d | 2025-12-04 A | 2025-12-20 A | 9 | 100% |  | 2025-12-04 | 2025-12-20 | 15d |  |  |  | WTP-CIV-020 | 3.2 | Chinaimo WTP | ASSESSMENT STATUS @ 31-AUG-2026 - NOT KUBOTA ACTUAL |
| 11 | WTP Foundations / Base Slabs |  | 60d | 2025-12-22 A | 2026-09-16 | 10 | 75% | 15d | 2025-12-22 | 2026-02-28 | 60d | 0d |  |  | WTP-CIV-030 | 3.3 | Chinaimo WTP | ASSESSMENT STATUS @ 31-AUG-2026 - NOT KUBOTA ACTUAL |
| 12 | Mixing / Flocculation Basin RC Works |  | 70d | 2026-03-02 A | 2026-10-31 | 11 | 45% | 38.5d | 2026-03-02 | 2026-05-21 | 70d | 515.5d | 0d |  | WTP-CIV-040 | 3.4 | Chinaimo WTP | ASSESSMENT STATUS @ 31-AUG-2026 - NOT KUBOTA ACTUAL |
| 13 | Sedimentation Basin RC Works |  | 100d | 2026-03-25 A | 2026-11-25 | 12SS+20d | 25% | 75d | 2026-03-25 | 2026-07-18 | 100d | 0d |  |  | WTP-CIV-050 | 3.5 | Chinaimo WTP | ASSESSMENT STATUS @ 31-AUG-2026 - NOT KUBOTA ACTUAL |
| 14 | Rapid Sand Filter Structure |  | 80d | 2026-11-26 | 2027-02-26 | 13 |  |  | 2026-07-20 | 2026-10-20 | 80d | 0d |  | start no earlier than 2026-08-31 | WTP-CIV-060 | 3.6 | Chinaimo WTP |  |
| 15 | Internal Channels / Pipe Galleries |  | 45d | 2027-02-27 | 2027-04-20 | 14 |  |  | 2026-10-21 | 2026-12-11 | 45d | 0d |  |  | WTP-CIV-070 | 3.7 | Chinaimo WTP |  |
| 16 | Waterproofing / Protective Coating |  | 30d | 2027-04-21 | 2027-05-25 | 15 |  |  | 2026-12-12 | 2027-01-15 | 30d | 0d |  |  | WTP-CIV-080 | 3.8 | Chinaimo WTP |  |
| 17 | Hydrostatic / Structural Water Test |  | 14d | 2027-05-26 | 2027-06-10 | 16 |  |  | 2027-01-16 | 2027-02-01 | 14d | 0d |  |  | WTP-CIV-090 | 3.9 | Chinaimo WTP |  |
| 18 | 10,000 mÂ³ Reservoir Excavation |  | 40d | 2025-10-24 A | 2025-12-09 A | 3 | 100% |  | 2025-10-24 | 2025-12-09 | 40d |  |  |  | RES-010 | 4.1 | Chinaimo Reservoir | ASSESSMENT STATUS @ 31-AUG-2026 - NOT KUBOTA ACTUAL |
| 19 | Reservoir Foundation / Base Slab |  | 60d | 2025-12-10 A | 2026-09-12 | 18 | 80% | 12d | 2025-12-10 | 2026-02-17 | 60d | 0d |  |  | RES-020 | 4.2 | Chinaimo Reservoir | ASSESSMENT STATUS @ 31-AUG-2026 - NOT KUBOTA ACTUAL |
| 20 | Reservoir Walls / Columns |  | 100d | 2026-02-18 A | 2026-11-16 | 19 | 45% | 55d | 2026-02-18 | 2026-06-13 | 100d | 0d |  |  | RES-030 | 4.3 | Chinaimo Reservoir | ASSESSMENT STATUS @ 31-AUG-2026 - NOT KUBOTA ACTUAL |
| 21 | Reservoir Roof Slab |  | 60d | 2026-06-15 A | 2027-01-18 | 20 | 10% | 54d | 2026-06-15 | 2026-08-22 | 60d | 314d | 0d |  | RES-040 | 4.4 | Chinaimo Reservoir | ASSESSMENT STATUS @ 31-AUG-2026 - NOT KUBOTA ACTUAL |
| 22 | Reservoir Waterproofing / Coating |  | 30d | 2027-01-19 | 2027-02-22 | 21 |  |  | 2026-08-24 | 2026-09-26 | 30d | 314d | 0d | start no earlier than 2026-08-31 | RES-050 | 4.5 | Chinaimo Reservoir |  |
| 23 | Reservoir Hydrostatic Test |  | 14d | 2027-02-23 | 2027-03-10 | 22 |  |  | 2026-09-28 | 2026-10-13 | 14d | 314d |  |  | RES-060 | 4.6 | Chinaimo Reservoir |  |
| 24 | Pump Room Civil / Structural Works |  | 75d | 2026-01-14 A | 2026-10-30 | 11SS+20d | 30% | 52.5d | 2026-01-14 | 2026-04-10 | 75d | 191.5d | 60d |  | BLDG-010 | 5.1 | Buildings | ASSESSMENT STATUS @ 31-AUG-2026 - NOT KUBOTA ACTUAL |
| 25 | Chemical Building Civil / Architectural |  | 90d | 2026-01-26 A | 2026-11-17 | 11SS+30d | 25% | 67.5d | 2026-01-26 | 2026-05-09 | 90d | 296.5d | 102d |  | BLDG-020 | 5.2 | Buildings | ASSESSMENT STATUS @ 31-AUG-2026 - NOT KUBOTA ACTUAL |
| 26 | Administration & Laboratory Building |  | 120d | 2025-12-04 A | 2026-12-17 | 9 | 22% | 93.6d | 2025-12-04 | 2026-04-22 | 120d | 0d |  |  | BLDG-030 | 5.3 | Buildings | ASSESSMENT STATUS @ 31-AUG-2026 - NOT KUBOTA ACTUAL |
| 27 | Building MEP / Architectural Finishes |  | 70d | 2026-04-23 A | 2027-03-05 | 26 | 5% | 66.5d | 2026-04-23 | 2026-07-13 | 70d | 408.9d |  |  | BLDG-040 | 5.4 | Buildings | ASSESSMENT STATUS @ 31-AUG-2026 - NOT KUBOTA ACTUAL |
| 28 | Process Piping Installation |  | 100d | 2027-06-11 | 2027-10-05 | 17, 6 |  |  | 2027-02-02 | 2027-05-28 | 100d | 0d |  |  | ME-010 | 6.1 | Process M&E |  |
| 29 | Pumps & Mechanical Equipment Installation |  | 90d | 2027-03-16 | 2027-06-29 | 24, 6 |  |  | 2026-11-19 | 2027-03-03 | 90d | 174.5d | 84.5d |  | ME-020 | 6.2 | Process M&E |  |
| 30 | Chemical Dosing Equipment Installation |  | 70d | 2027-03-16 | 2027-06-05 | 25, 6 |  |  | 2026-11-19 | 2027-02-08 | 70d | 194.5d | 104.5d |  | ME-030 | 6.3 | Process M&E |  |
| 31 | Filter Media / Underdrain Equipment |  | 50d | 2027-06-11 | 2027-08-07 | 17, 6 |  |  | 2027-02-02 | 2027-03-31 | 50d | 140d | 50d |  | ME-040 | 6.4 | Process M&E |  |
| 32 | Electrical Installation / MCC / Cabling |  | 100d | 2027-01-08 | 2027-05-05 | 24, 8 |  |  | 2026-09-10 | 2027-01-04 | 100d | 131.5d |  |  | ME-050 | 6.5 | Process M&E |  |
| 33 | Instrumentation & SCADA Installation |  | 90d | 2027-10-06 | 2028-01-18 | 28, 32, 7 |  |  | 2027-05-29 | 2027-09-10 | 90d | 0d |  |  | ME-060 | 6.6 | Process M&E |  |
| 34 | Salakham Site Preparation / Excavation |  | 40d | 2025-10-24 A | 2025-12-09 A | 3 | 100% |  | 2025-10-24 | 2025-12-09 | 40d |  |  |  | SAL-010 | 7.1 | Salakham | ASSESSMENT STATUS @ 31-AUG-2026 - NOT KUBOTA ACTUAL |
| 35 | 7,100 mÂ³ Reservoir RC Works |  | 180d | 2025-12-10 A | 2027-02-03 | 34 | 25% | 135d | 2025-12-10 | 2026-07-07 | 180d | 264d | 34.5d |  | SAL-020 | 7.2 | Salakham | ASSESSMENT STATUS @ 31-AUG-2026 - NOT KUBOTA ACTUAL |
| 36 | Salakham Pump Room |  | 90d | 2025-11-28 A | 2026-10-31 | 34SS+30d | 40% | 54d | 2025-11-28 | 2026-03-12 | 90d | 345d | 115.5d |  | SAL-030 | 7.3 | Salakham | ASSESSMENT STATUS @ 31-AUG-2026 - NOT KUBOTA ACTUAL |
| 37 | Salakham M&E Installation |  | 80d | 2027-03-16 | 2027-06-17 | 35, 36, 6 |  |  | 2026-11-19 | 2027-02-19 | 80d | 229.5d |  |  | SAL-040 | 7.4 | Salakham |  |
| 38 | 22-kV Route Survey / Permits |  | 45d | 2025-10-24 A | 2025-12-15 A | 2 | 100% |  | 2025-10-24 | 2025-12-15 | 45d |  |  |  | PWR-010 | 8.1 | Power | ASSESSMENT STATUS @ 31-AUG-2026 - NOT KUBOTA ACTUAL |
| 39 | Pole / Foundation Works |  | 100d | 2025-12-16 A | 2026-11-07 | 38 | 40% | 60d | 2025-12-16 | 2026-04-10 | 100d | 0d |  |  | PWR-020 | 8.2 | Power | ASSESSMENT STATUS @ 31-AUG-2026 - NOT KUBOTA ACTUAL |
| 40 | 22-kV Line Installation |  | 120d | 2026-04-11 A | 2027-03-06 | 39 | 15% | 102d | 2026-04-11 | 2026-08-28 | 120d | 242d | 0d |  | PWR-030 | 8.3 | Power | ASSESSMENT STATUS @ 31-AUG-2026 - NOT KUBOTA ACTUAL |
| 41 | Receiving Equipment / Energization |  | 30d | 2027-03-08 | 2027-04-10 | 40, 8 |  |  | 2026-09-10 | 2026-10-14 | 30d | 242d |  |  | PWR-040 | 8.4 | Power |  |
| 42 | Mechanical Pre-Commissioning |  | 25d | 2027-10-06 | 2027-11-03 | 28, 29, 30, 31 |  |  | 2027-05-29 | 2027-06-26 | 25d | 90d |  |  | COMM-010 | 9.1 | Commissioning |  |
| 43 | Electrical / I&C Pre-Commissioning |  | 25d | 2028-01-19 | 2028-02-16 | 33, 41 |  |  | 2027-09-11 | 2027-10-09 | 25d | 0d |  |  | COMM-020 | 9.2 | Commissioning |  |
| 44 | Dry Commissioning |  | 20d | 2028-02-17 | 2028-03-10 | 42, 43 |  |  | 2027-10-11 | 2027-11-02 | 20d | 0d |  |  | COMM-030 | 9.3 | Commissioning |  |
| 45 | Wet Commissioning / Process Start-Up |  | 30d | 2028-03-11 | 2028-04-14 | 44, 23, 37 |  |  | 2027-11-03 | 2027-12-07 | 30d | 0d |  |  | COMM-040 | 9.4 | Commissioning |  |
| 46 | Performance / Water Quality Testing |  | 30d | 2028-04-15 | 2028-05-19 | 45 |  |  | 2027-12-08 | 2028-01-11 | 30d | 0d |  |  | COMM-050 | 9.5 | Commissioning |  |
| 47 | Punch List / Rectification |  | 30d | 2028-05-20 | 2028-06-23 | 46 |  |  | 2028-01-12 | 2028-02-15 | 30d | 0d |  |  | COMM-060 | 9.6 | Commissioning |  |
| 48 | Training / O&M Documents |  | 20d | 2028-03-11 | 2028-04-03 | 45SS |  |  | 2027-11-03 | 2027-11-25 | 20d | 70d |  |  | COMM-070 | 9.7 | Commissioning |  |
| 49 | Taking Over / Completion Milestone | milestone | 0d | 2028-06-23 | 2028-06-23 | 47, 48, 27 |  |  | 2028-02-15 | 2028-02-15 | 0d | 0d |  |  | COMM-080 | 9.8 | Commissioning |  |

Notes:
- 1: Activity ID: PREL-010 / Assessment-derived logic/duration. / Assessment schedule status at 31-Aug-2026: 100%. BOQ/value-weighted assessment progress is 12.095%; public checkpoint is 4.19% at 05-May-2026.
- 2: Activity ID: PREL-020 / Assessment-derived logic/duration. / Assessment schedule status at 31-Aug-2026: 100%. BOQ/value-weighted assessment progress is 12.095%; public checkpoint is 4.19% at 05-May-2026.
- 3: Activity ID: PREL-030 / Assessment-derived logic/duration. / Assessment schedule status at 31-Aug-2026: 100%. BOQ/value-weighted assessment progress is 12.095%; public checkpoint is 4.19% at 05-May-2026.
- 4: Activity ID: DES-010 / Assessment-derived logic/duration. / Assessment schedule status at 31-Aug-2026: 100%. BOQ/value-weighted assessment progress is 12.095%; public checkpoint is 4.19% at 05-May-2026.
- 5: Activity ID: DES-020 / Assessment-derived logic/duration. / Assessment schedule status at 31-Aug-2026: 90%. BOQ/value-weighted assessment progress is 12.095%; public checkpoint is 4.19% at 05-May-2026.
- 6: Activity ID: PROC-010 / Assessment-derived logic/duration. / Assessment schedule status at 31-Aug-2026: 45%. BOQ/value-weighted assessment progress is 12.095%; public checkpoint is 4.19% at 05-May-2026.
- 7: Activity ID: PROC-020 / Assessment-derived logic/duration. / Assessment schedule status at 31-Aug-2026: 40%. BOQ/value-weighted assessment progress is 12.095%; public checkpoint is 4.19% at 05-May-2026.
- 8: Activity ID: PROC-030 / Assessment-derived logic/duration. / Assessment schedule status at 31-Aug-2026: 55%. BOQ/value-weighted assessment progress is 12.095%; public checkpoint is 4.19% at 05-May-2026.
- 9: Activity ID: WTP-CIV-010 / Assessment-derived logic/duration. / Assessment schedule status at 31-Aug-2026: 100%. BOQ/value-weighted assessment progress is 12.095%; public checkpoint is 4.19% at 05-May-2026.
- 10: Activity ID: WTP-CIV-020 / Assessment-derived logic/duration. / Assessment schedule status at 31-Aug-2026: 100%. BOQ/value-weighted assessment progress is 12.095%; public checkpoint is 4.19% at 05-May-2026.
- 11: Activity ID: WTP-CIV-030 / Assessment-derived logic/duration. / Assessment schedule status at 31-Aug-2026: 75%. BOQ/value-weighted assessment progress is 12.095%; public checkpoint is 4.19% at 05-May-2026.
- 12: Activity ID: WTP-CIV-040 / Assessment-derived logic/duration. / Assessment schedule status at 31-Aug-2026: 45%. BOQ/value-weighted assessment progress is 12.095%; public checkpoint is 4.19% at 05-May-2026.
- 13: Activity ID: WTP-CIV-050 / Assessment-derived logic/duration. / Assessment schedule status at 31-Aug-2026: 25%. BOQ/value-weighted assessment progress is 12.095%; public checkpoint is 4.19% at 05-May-2026.
- 14: Activity ID: WTP-CIV-060 / Assessment-derived logic/duration.
- 15: Activity ID: WTP-CIV-070 / Assessment-derived logic/duration.
- 16: Activity ID: WTP-CIV-080 / Assessment-derived logic/duration.
- 17: Activity ID: WTP-CIV-090 / Assessment-derived logic/duration.
- 18: Activity ID: RES-010 / Assessment-derived logic/duration. / Assessment schedule status at 31-Aug-2026: 100%. BOQ/value-weighted assessment progress is 12.095%; public checkpoint is 4.19% at 05-May-2026.
- 19: Activity ID: RES-020 / Assessment-derived logic/duration. / Assessment schedule status at 31-Aug-2026: 80%. BOQ/value-weighted assessment progress is 12.095%; public checkpoint is 4.19% at 05-May-2026.
- 20: Activity ID: RES-030 / Assessment-derived logic/duration. / Assessment schedule status at 31-Aug-2026: 45%. BOQ/value-weighted assessment progress is 12.095%; public checkpoint is 4.19% at 05-May-2026.
- 21: Activity ID: RES-040 / Assessment-derived logic/duration. / Assessment schedule status at 31-Aug-2026: 10%. BOQ/value-weighted assessment progress is 12.095%; public checkpoint is 4.19% at 05-May-2026.
- 22: Activity ID: RES-050 / Assessment-derived logic/duration.
- 23: Activity ID: RES-060 / Assessment-derived logic/duration.
- 24: Activity ID: BLDG-010 / Assessment-derived logic/duration. / Assessment schedule status at 31-Aug-2026: 30%. BOQ/value-weighted assessment progress is 12.095%; public checkpoint is 4.19% at 05-May-2026.
- 25: Activity ID: BLDG-020 / Assessment-derived logic/duration. / Assessment schedule status at 31-Aug-2026: 25%. BOQ/value-weighted assessment progress is 12.095%; public checkpoint is 4.19% at 05-May-2026.
- 26: Activity ID: BLDG-030 / Assessment-derived logic/duration. / Assessment schedule status at 31-Aug-2026: 22%. BOQ/value-weighted assessment progress is 12.095%; public checkpoint is 4.19% at 05-May-2026.
- 27: Activity ID: BLDG-040 / Assessment-derived logic/duration. / Assessment schedule status at 31-Aug-2026: 5%. BOQ/value-weighted assessment progress is 12.095%; public checkpoint is 4.19% at 05-May-2026.
- 28: Activity ID: ME-010 / Assessment-derived logic/duration.
- 29: Activity ID: ME-020 / Assessment-derived logic/duration.
- 30: Activity ID: ME-030 / Assessment-derived logic/duration.
- 31: Activity ID: ME-040 / Assessment-derived logic/duration.
- 32: Activity ID: ME-050 / Assessment-derived logic/duration.
- 33: Activity ID: ME-060 / Assessment-derived logic/duration.
- 34: Activity ID: SAL-010 / Assessment-derived logic/duration. / Assessment schedule status at 31-Aug-2026: 100%. BOQ/value-weighted assessment progress is 12.095%; public checkpoint is 4.19% at 05-May-2026.
- 35: Activity ID: SAL-020 / Assessment-derived logic/duration. / Assessment schedule status at 31-Aug-2026: 25%. BOQ/value-weighted assessment progress is 12.095%; public checkpoint is 4.19% at 05-May-2026.
- 36: Activity ID: SAL-030 / Assessment-derived logic/duration. / Assessment schedule status at 31-Aug-2026: 40%. BOQ/value-weighted assessment progress is 12.095%; public checkpoint is 4.19% at 05-May-2026.
- 37: Activity ID: SAL-040 / Assessment-derived logic/duration.
- 38: Activity ID: PWR-010 / Assessment-derived logic/duration. / Assessment schedule status at 31-Aug-2026: 100%. BOQ/value-weighted assessment progress is 12.095%; public checkpoint is 4.19% at 05-May-2026.
- 39: Activity ID: PWR-020 / Assessment-derived logic/duration. / Assessment schedule status at 31-Aug-2026: 40%. BOQ/value-weighted assessment progress is 12.095%; public checkpoint is 4.19% at 05-May-2026.
- 40: Activity ID: PWR-030 / Assessment-derived logic/duration. / Assessment schedule status at 31-Aug-2026: 15%. BOQ/value-weighted assessment progress is 12.095%; public checkpoint is 4.19% at 05-May-2026.
- 41: Activity ID: PWR-040 / Assessment-derived logic/duration.
- 42: Activity ID: COMM-010 / Assessment-derived logic/duration.
- 43: Activity ID: COMM-020 / Assessment-derived logic/duration.
- 44: Activity ID: COMM-030 / Assessment-derived logic/duration.
- 45: Activity ID: COMM-040 / Assessment-derived logic/duration.
- 46: Activity ID: COMM-050 / Assessment-derived logic/duration.
- 47: Activity ID: COMM-060 / Assessment-derived logic/duration.
- 48: Activity ID: COMM-070 / Assessment-derived logic/duration.
- 49: Activity ID: COMM-080 / Assessment-derived logic/duration.
