# Michael_Futol_Chinaimo_Baseline

Schedule from MS Project, 2025-10-01 to 2028-02-15.
Original Assessment Baseline Rev 0. Public anchors only; detailed logic/durations are assessment-derived. No confidential Kubota programme is represented.

## Calendars

- Standard: Mon-Sat 08:00-12:00, 13:00-17:00; Sun off.

## Schedule

| ID | Task | Type | Duration | Start | Finish | Predecessors | Baseline start | Baseline finish | Baseline duration | Total slack | Free slack | Text1 | Text2 | Text3 |
| --- | --- | --- | --- | --- | --- | --- | --- | --- | --- | --- | --- | --- | --- | --- |
| 1 | Notice to Proceed | milestone | 0d | 2025-10-01 | 2025-10-01 |  | 2025-10-01 | 2025-10-01 | 0d | 0d |  | PREL-010 | 1.1 | Preliminaries |
| 2 | Mobilization & Temporary Facilities |  | 20d | 2025-10-01 | 2025-10-23 | 1 | 2025-10-01 | 2025-10-23 | 20d | 0d |  | PREL-020 | 1.2 | Preliminaries |
| 3 | Survey / Setting Out |  | 15d | 2025-10-07 | 2025-10-23 | 2SS+5d | 2025-10-07 | 2025-10-23 | 15d | 0d |  | PREL-030 | 1.3 | Preliminaries |
| 4 | Review IFC Drawings / Interfaces |  | 30d | 2025-10-01 | 2025-11-04 | 1 | 2025-10-01 | 2025-11-04 | 30d | 64d | 0d | DES-010 | 2.1 | Design & Procurement |
| 5 | Method Statements & Material Submittals |  | 45d | 2025-10-13 | 2025-12-03 | 4SS+10d | 2025-10-13 | 2025-12-03 | 45d | 64d | 0d | DES-020 | 2.2 | Design & Procurement |
| 6 | Long-Lead M&E Procurement |  | 300d | 2025-12-04 | 2026-11-18 | 5 | 2025-12-04 | 2026-11-18 | 300d | 64d | 0d | PROC-010 | 2.3 | Design & Procurement |
| 7 | SCADA / Instrumentation Procurement |  | 260d | 2025-12-04 | 2026-10-02 | 5 | 2025-12-04 | 2026-10-02 | 260d | 204d |  | PROC-020 | 2.4 | Design & Procurement |
| 8 | Electrical / Receiving Equipment Procurement |  | 240d | 2025-12-04 | 2026-09-09 | 5 | 2025-12-04 | 2026-09-09 | 240d | 124d | 0d | PROC-030 | 2.5 | Design & Procurement |
| 9 | Site Clearing / Excavation / Dewatering |  | 35d | 2025-10-24 | 2025-12-03 | 3 | 2025-10-24 | 2025-12-03 | 35d | 0d |  | WTP-CIV-010 | 3.1 | Chinaimo WTP |
| 10 | Ground Preparation / Blinding |  | 15d | 2025-12-04 | 2025-12-20 | 9 | 2025-12-04 | 2025-12-20 | 15d | 0d |  | WTP-CIV-020 | 3.2 | Chinaimo WTP |
| 11 | WTP Foundations / Base Slabs |  | 60d | 2025-12-22 | 2026-02-28 | 10 | 2025-12-22 | 2026-02-28 | 60d | 0d |  | WTP-CIV-030 | 3.3 | Chinaimo WTP |
| 12 | Mixing / Flocculation Basin RC Works |  | 70d | 2026-03-02 | 2026-05-21 | 11 | 2026-03-02 | 2026-05-21 | 70d | 0d |  | WTP-CIV-040 | 3.4 | Chinaimo WTP |
| 13 | Sedimentation Basin RC Works |  | 100d | 2026-03-25 | 2026-07-18 | 12SS+20d | 2026-03-25 | 2026-07-18 | 100d | 0d |  | WTP-CIV-050 | 3.5 | Chinaimo WTP |
| 14 | Rapid Sand Filter Structure |  | 80d | 2026-07-20 | 2026-10-20 | 13 | 2026-07-20 | 2026-10-20 | 80d | 0d |  | WTP-CIV-060 | 3.6 | Chinaimo WTP |
| 15 | Internal Channels / Pipe Galleries |  | 45d | 2026-10-21 | 2026-12-11 | 14 | 2026-10-21 | 2026-12-11 | 45d | 0d |  | WTP-CIV-070 | 3.7 | Chinaimo WTP |
| 16 | Waterproofing / Protective Coating |  | 30d | 2026-12-12 | 2027-01-15 | 15 | 2026-12-12 | 2027-01-15 | 30d | 0d |  | WTP-CIV-080 | 3.8 | Chinaimo WTP |
| 17 | Hydrostatic / Structural Water Test |  | 14d | 2027-01-16 | 2027-02-01 | 16 | 2027-01-16 | 2027-02-01 | 14d | 0d |  | WTP-CIV-090 | 3.9 | Chinaimo WTP |
| 18 | 10,000 mÂ³ Reservoir Excavation |  | 40d | 2025-10-24 | 2025-12-09 | 3 | 2025-10-24 | 2025-12-09 | 40d | 330d | 0d | RES-010 | 4.1 | Chinaimo Reservoir |
| 19 | Reservoir Foundation / Base Slab |  | 60d | 2025-12-10 | 2026-02-17 | 18 | 2025-12-10 | 2026-02-17 | 60d | 330d | 0d | RES-020 | 4.2 | Chinaimo Reservoir |
| 20 | Reservoir Walls / Columns |  | 100d | 2026-02-18 | 2026-06-13 | 19 | 2026-02-18 | 2026-06-13 | 100d | 330d | 0d | RES-030 | 4.3 | Chinaimo Reservoir |
| 21 | Reservoir Roof Slab |  | 60d | 2026-06-15 | 2026-08-22 | 20 | 2026-06-15 | 2026-08-22 | 60d | 330d | 0d | RES-040 | 4.4 | Chinaimo Reservoir |
| 22 | Reservoir Waterproofing / Coating |  | 30d | 2026-08-24 | 2026-09-26 | 21 | 2026-08-24 | 2026-09-26 | 30d | 330d | 0d | RES-050 | 4.5 | Chinaimo Reservoir |
| 23 | Reservoir Hydrostatic Test |  | 14d | 2026-09-28 | 2026-10-13 | 22 | 2026-09-28 | 2026-10-13 | 14d | 330d |  | RES-060 | 4.6 | Chinaimo Reservoir |
| 24 | Pump Room Civil / Structural Works |  | 75d | 2026-01-14 | 2026-04-10 | 11SS+20d | 2026-01-14 | 2026-04-10 | 75d | 254d | 130d | BLDG-010 | 5.1 | Buildings |
| 25 | Chemical Building Civil / Architectural |  | 90d | 2026-01-26 | 2026-05-09 | 11SS+30d | 2026-01-26 | 2026-05-09 | 90d | 349d | 165d | BLDG-020 | 5.2 | Buildings |
| 26 | Administration & Laboratory Building |  | 120d | 2025-12-04 | 2026-04-22 | 9 | 2025-12-04 | 2026-04-22 | 120d | 499d | 0d | BLDG-030 | 5.3 | Buildings |
| 27 | Building MEP / Architectural Finishes |  | 70d | 2026-04-23 | 2026-07-13 | 26 | 2026-04-23 | 2026-07-13 | 70d | 499d |  | BLDG-040 | 5.4 | Buildings |
| 28 | Process Piping Installation |  | 100d | 2027-02-02 | 2027-05-28 | 17, 6 | 2027-02-02 | 2027-05-28 | 100d | 0d |  | ME-010 | 6.1 | Process M&E |
| 29 | Pumps & Mechanical Equipment Installation |  | 90d | 2026-11-19 | 2027-03-03 | 24, 6 | 2026-11-19 | 2027-03-03 | 90d | 164d | 74d | ME-020 | 6.2 | Process M&E |
| 30 | Chemical Dosing Equipment Installation |  | 70d | 2026-11-19 | 2027-02-08 | 25, 6 | 2026-11-19 | 2027-02-08 | 70d | 184d | 94d | ME-030 | 6.3 | Process M&E |
| 31 | Filter Media / Underdrain Equipment |  | 50d | 2027-02-02 | 2027-03-31 | 17, 6 | 2027-02-02 | 2027-03-31 | 50d | 140d | 50d | ME-040 | 6.4 | Process M&E |
| 32 | Electrical Installation / MCC / Cabling |  | 100d | 2026-09-10 | 2027-01-04 | 24, 8 | 2026-09-10 | 2027-01-04 | 100d | 124d |  | ME-050 | 6.5 | Process M&E |
| 33 | Instrumentation & SCADA Installation |  | 90d | 2027-05-29 | 2027-09-10 | 28, 32, 7 | 2027-05-29 | 2027-09-10 | 90d | 0d |  | ME-060 | 6.6 | Process M&E |
| 34 | Salakham Site Preparation / Excavation |  | 40d | 2025-10-24 | 2025-12-09 | 3 | 2025-10-24 | 2025-12-09 | 40d | 334d | 0d | SAL-010 | 7.1 | Salakham |
| 35 | 7,100 mÂ³ Reservoir RC Works |  | 180d | 2025-12-10 | 2026-07-07 | 34 | 2025-12-10 | 2026-07-07 | 180d | 334d | 115d | SAL-020 | 7.2 | Salakham |
| 36 | Salakham Pump Room |  | 90d | 2025-11-28 | 2026-03-12 | 34SS+30d | 2025-11-28 | 2026-03-12 | 90d | 434d | 215d | SAL-030 | 7.3 | Salakham |
| 37 | Salakham M&E Installation |  | 80d | 2026-11-19 | 2027-02-19 | 35, 36, 6 | 2026-11-19 | 2027-02-19 | 80d | 219d |  | SAL-040 | 7.4 | Salakham |
| 38 | 22-kV Route Survey / Permits |  | 45d | 2025-10-24 | 2025-12-15 | 2 | 2025-10-24 | 2025-12-15 | 45d | 294d | 0d | PWR-010 | 8.1 | Power |
| 39 | Pole / Foundation Works |  | 100d | 2025-12-16 | 2026-04-10 | 38 | 2025-12-16 | 2026-04-10 | 100d | 294d | 0d | PWR-020 | 8.2 | Power |
| 40 | 22-kV Line Installation |  | 120d | 2026-04-11 | 2026-08-28 | 39 | 2026-04-11 | 2026-08-28 | 120d | 294d | 10d | PWR-030 | 8.3 | Power |
| 41 | Receiving Equipment / Energization |  | 30d | 2026-09-10 | 2026-10-14 | 40, 8 | 2026-09-10 | 2026-10-14 | 30d | 284d |  | PWR-040 | 8.4 | Power |
| 42 | Mechanical Pre-Commissioning |  | 25d | 2027-05-29 | 2027-06-26 | 28, 29, 30, 31 | 2027-05-29 | 2027-06-26 | 25d | 90d |  | COMM-010 | 9.1 | Commissioning |
| 43 | Electrical / I&C Pre-Commissioning |  | 25d | 2027-09-11 | 2027-10-09 | 33, 41 | 2027-09-11 | 2027-10-09 | 25d | 0d |  | COMM-020 | 9.2 | Commissioning |
| 44 | Dry Commissioning |  | 20d | 2027-10-11 | 2027-11-02 | 42, 43 | 2027-10-11 | 2027-11-02 | 20d | 0d |  | COMM-030 | 9.3 | Commissioning |
| 45 | Wet Commissioning / Process Start-Up |  | 30d | 2027-11-03 | 2027-12-07 | 44, 23, 37 | 2027-11-03 | 2027-12-07 | 30d | 0d |  | COMM-040 | 9.4 | Commissioning |
| 46 | Performance / Water Quality Testing |  | 30d | 2027-12-08 | 2028-01-11 | 45 | 2027-12-08 | 2028-01-11 | 30d | 0d |  | COMM-050 | 9.5 | Commissioning |
| 47 | Punch List / Rectification |  | 30d | 2028-01-12 | 2028-02-15 | 46 | 2028-01-12 | 2028-02-15 | 30d | 0d |  | COMM-060 | 9.6 | Commissioning |
| 48 | Training / O&M Documents |  | 20d | 2027-11-03 | 2027-11-25 | 45SS | 2027-11-03 | 2027-11-25 | 20d | 70d |  | COMM-070 | 9.7 | Commissioning |
| 49 | Taking Over / Completion Milestone | milestone | 0d | 2028-02-15 | 2028-02-15 | 47, 48, 27 | 2028-02-15 | 2028-02-15 | 0d | 0d |  | COMM-080 | 9.8 | Commissioning |

Notes:
- 1: Activity ID: PREL-010 / Assessment-derived logic/duration.
- 2: Activity ID: PREL-020 / Assessment-derived logic/duration.
- 3: Activity ID: PREL-030 / Assessment-derived logic/duration.
- 4: Activity ID: DES-010 / Assessment-derived logic/duration.
- 5: Activity ID: DES-020 / Assessment-derived logic/duration.
- 6: Activity ID: PROC-010 / Assessment-derived logic/duration.
- 7: Activity ID: PROC-020 / Assessment-derived logic/duration.
- 8: Activity ID: PROC-030 / Assessment-derived logic/duration.
- 9: Activity ID: WTP-CIV-010 / Assessment-derived logic/duration.
- 10: Activity ID: WTP-CIV-020 / Assessment-derived logic/duration.
- 11: Activity ID: WTP-CIV-030 / Assessment-derived logic/duration.
- 12: Activity ID: WTP-CIV-040 / Assessment-derived logic/duration.
- 13: Activity ID: WTP-CIV-050 / Assessment-derived logic/duration.
- 14: Activity ID: WTP-CIV-060 / Assessment-derived logic/duration.
- 15: Activity ID: WTP-CIV-070 / Assessment-derived logic/duration.
- 16: Activity ID: WTP-CIV-080 / Assessment-derived logic/duration.
- 17: Activity ID: WTP-CIV-090 / Assessment-derived logic/duration.
- 18: Activity ID: RES-010 / Assessment-derived logic/duration.
- 19: Activity ID: RES-020 / Assessment-derived logic/duration.
- 20: Activity ID: RES-030 / Assessment-derived logic/duration.
- 21: Activity ID: RES-040 / Assessment-derived logic/duration.
- 22: Activity ID: RES-050 / Assessment-derived logic/duration.
- 23: Activity ID: RES-060 / Assessment-derived logic/duration.
- 24: Activity ID: BLDG-010 / Assessment-derived logic/duration.
- 25: Activity ID: BLDG-020 / Assessment-derived logic/duration.
- 26: Activity ID: BLDG-030 / Assessment-derived logic/duration.
- 27: Activity ID: BLDG-040 / Assessment-derived logic/duration.
- 28: Activity ID: ME-010 / Assessment-derived logic/duration.
- 29: Activity ID: ME-020 / Assessment-derived logic/duration.
- 30: Activity ID: ME-030 / Assessment-derived logic/duration.
- 31: Activity ID: ME-040 / Assessment-derived logic/duration.
- 32: Activity ID: ME-050 / Assessment-derived logic/duration.
- 33: Activity ID: ME-060 / Assessment-derived logic/duration.
- 34: Activity ID: SAL-010 / Assessment-derived logic/duration.
- 35: Activity ID: SAL-020 / Assessment-derived logic/duration.
- 36: Activity ID: SAL-030 / Assessment-derived logic/duration.
- 37: Activity ID: SAL-040 / Assessment-derived logic/duration.
- 38: Activity ID: PWR-010 / Assessment-derived logic/duration.
- 39: Activity ID: PWR-020 / Assessment-derived logic/duration.
- 40: Activity ID: PWR-030 / Assessment-derived logic/duration.
- 41: Activity ID: PWR-040 / Assessment-derived logic/duration.
- 42: Activity ID: COMM-010 / Assessment-derived logic/duration.
- 43: Activity ID: COMM-020 / Assessment-derived logic/duration.
- 44: Activity ID: COMM-030 / Assessment-derived logic/duration.
- 45: Activity ID: COMM-040 / Assessment-derived logic/duration.
- 46: Activity ID: COMM-050 / Assessment-derived logic/duration.
- 47: Activity ID: COMM-060 / Assessment-derived logic/duration.
- 48: Activity ID: COMM-070 / Assessment-derived logic/duration.
- 49: Activity ID: COMM-080 / Assessment-derived logic/duration.
