# Michael_Futol_Chinaimo_Updated_Delay

Schedule from MS Project, 2026-09-01 to 2029-01-26, status date 2027-08-31.
Public project scope informed the mock WBS. Quantities, rates, durations, logic, progress, claims and delay scenarios are illustrative assessment data and are not Kubota Construction contract data.

## Calendars

- Standard: Mon-Sat 08:00-12:00, 13:00-17:00; Sun off.

## Schedule

| ID | Task | Type | Duration | Start | Finish | Predecessors | Baseline start | Baseline finish | Baseline duration | Total slack | Free slack | Text1 | Text2 | Text3 |
| --- | --- | --- | --- | --- | --- | --- | --- | --- | --- | --- | --- | --- | --- | --- |
| 1 | Notice to Proceed | milestone | 0d? | 2026-09-01 | 2026-09-01 |  | 2026-09-01 | 2026-09-01 | 0d? | 0d |  | PREL-010 | 1.1 | Preliminaries |
| 2 | Mobilization & Temporary Facilities |  | 20d? | 2026-09-01 | 2026-09-23 | 1 | 2026-09-01 | 2026-09-23 | 20d? | 0d |  | PREL-020 | 1.2 | Preliminaries |
| 3 | Survey / Setting Out |  | 15d? | 2026-09-07 | 2026-09-23 | 2SS+5d | 2026-09-07 | 2026-09-23 | 15d? | 0d |  | PREL-030 | 1.3 | Preliminaries |
| 4 | Review IFC Drawings / Interfaces |  | 30d? | 2026-09-01 | 2026-10-05 | 1 | 2026-09-01 | 2026-10-05 | 30d? | 74d | 0d | DES-010 | 2.1 | Design & Procurement |
| 5 | Method Statements & Material Submittals |  | 45d? | 2026-09-12 | 2026-11-03 | 4SS+10d | 2026-09-12 | 2026-11-03 | 45d? | 74d | 0d | DES-020 | 2.2 | Design & Procurement |
| 6 | Long-Lead M&E Procurement |  | 300d? | 2026-11-04 | 2027-10-19 | 5 | 2026-11-04 | 2027-10-19 | 300d? | 74d | 0d | PROC-010 | 2.3 | Design & Procurement |
| 7 | SCADA / Instrumentation Procurement |  | 260d? | 2026-11-04 | 2027-09-02 | 5 | 2026-11-04 | 2027-09-02 | 260d? | 214d |  | PROC-020 | 2.4 | Design & Procurement |
| 8 | Electrical / Receiving Equipment Procurement |  | 240d? | 2026-11-04 | 2027-08-10 | 5 | 2026-11-04 | 2027-08-10 | 240d? | 134d | 0d | PROC-030 | 2.5 | Design & Procurement |
| 9 | Site Clearing / Excavation / Dewatering |  | 35d? | 2026-09-24 | 2026-11-03 | 3 | 2026-09-24 | 2026-11-03 | 35d? | 0d |  | WTP-CIV-010 | 3.1 | Chinaimo WTP |
| 10 | Ground Preparation / Blinding |  | 15d? | 2026-11-04 | 2026-11-20 | 9 | 2026-11-04 | 2026-11-20 | 15d? | 0d |  | WTP-CIV-020 | 3.2 | Chinaimo WTP |
| 11 | WTP Foundations / Base Slabs |  | 60d? | 2026-11-21 | 2027-01-29 | 10 | 2026-11-21 | 2027-01-29 | 60d? | 0d |  | WTP-CIV-030 | 3.3 | Chinaimo WTP |
| 12 | Mixing / Flocculation Basin RC Works |  | 70d? | 2027-01-30 | 2027-04-21 | 11 | 2027-01-30 | 2027-04-21 | 70d? | 0d |  | WTP-CIV-040 | 3.4 | Chinaimo WTP |
| 13 | Sedimentation Basin RC Works |  | 100d? | 2027-02-23 | 2027-06-18 | 12SS+20d | 2027-02-23 | 2027-06-18 | 100d? | 0d |  | WTP-CIV-050 | 3.5 | Chinaimo WTP |
| 14 | Rapid Sand Filter Structure |  | 90d? | 2027-06-19 | 2027-10-01 | 13 | 2027-06-19 | 2027-09-20 | 80d? | 0d |  | WTP-CIV-060 | 3.6 | Chinaimo WTP |
| 15 | Internal Channels / Pipe Galleries |  | 45d? | 2027-10-02 | 2027-11-23 | 14 | 2027-09-21 | 2027-11-11 | 45d? | 0d |  | WTP-CIV-070 | 3.7 | Chinaimo WTP |
| 16 | Waterproofing / Protective Coating |  | 30d? | 2027-11-24 | 2027-12-28 | 15 | 2027-11-12 | 2027-12-16 | 30d? | 0d |  | WTP-CIV-080 | 3.8 | Chinaimo WTP |
| 17 | Hydrostatic / Structural Water Test |  | 14d? | 2027-12-29 | 2028-01-13 | 16 | 2027-12-17 | 2028-01-01 | 14d? | 0d |  | WTP-CIV-090 | 3.9 | Chinaimo WTP |
| 18 | 10,000 m³ Reservoir Excavation |  | 40d? | 2026-09-24 | 2026-11-09 | 3 | 2026-09-24 | 2026-11-09 | 40d? | 340d | 0d | RES-010 | 4.1 | Chinaimo Reservoir |
| 19 | Reservoir Foundation / Base Slab |  | 60d? | 2026-11-10 | 2027-01-18 | 18 | 2026-11-10 | 2027-01-18 | 60d? | 340d | 0d | RES-020 | 4.2 | Chinaimo Reservoir |
| 20 | Reservoir Walls / Columns |  | 100d? | 2027-01-19 | 2027-05-14 | 19 | 2027-01-19 | 2027-05-14 | 100d? | 340d | 0d | RES-030 | 4.3 | Chinaimo Reservoir |
| 21 | Reservoir Roof Slab |  | 60d? | 2027-05-15 | 2027-07-23 | 20 | 2027-05-15 | 2027-07-23 | 60d? | 340d | 0d | RES-040 | 4.4 | Chinaimo Reservoir |
| 22 | Reservoir Waterproofing / Coating |  | 30d? | 2027-07-24 | 2027-08-27 | 21 | 2027-07-24 | 2027-08-27 | 30d? | 340d | 0d | RES-050 | 4.5 | Chinaimo Reservoir |
| 23 | Reservoir Hydrostatic Test |  | 14d? | 2027-08-28 | 2027-09-13 | 22 | 2027-08-28 | 2027-09-13 | 14d? | 340d |  | RES-060 | 4.6 | Chinaimo Reservoir |
| 24 | Pump Room Civil / Structural Works |  | 75d? | 2026-12-15 | 2027-03-11 | 11SS+20d | 2026-12-15 | 2027-03-11 | 75d? | 264d | 130d | BLDG-010 | 5.1 | Buildings |
| 25 | Chemical Building Civil / Architectural |  | 90d? | 2026-12-26 | 2027-04-09 | 11SS+30d | 2026-12-26 | 2027-04-09 | 90d? | 359d | 165d | BLDG-020 | 5.2 | Buildings |
| 26 | Administration & Laboratory Building |  | 135d? | 2026-11-04 | 2027-04-09 | 9 | 2026-11-04 | 2027-03-23 | 120d? | 494d | 0d | BLDG-030 | 5.3 | Buildings |
| 27 | Building MEP / Architectural Finishes |  | 70d? | 2027-04-10 | 2027-06-30 | 26 | 2027-03-24 | 2027-06-12 | 70d? | 494d |  | BLDG-040 | 5.4 | Buildings |
| 28 | Process Piping Installation |  | 100d? | 2028-01-14 | 2028-05-09 | 17, 6 | 2028-01-03 | 2028-04-27 | 100d? | 0d |  | ME-010 | 6.1 | Process M&E |
| 29 | Pumps & Mechanical Equipment Installation |  | 90d? | 2027-10-20 | 2028-02-01 | 24, 6 | 2027-10-20 | 2028-02-01 | 90d? | 174d | 84d | ME-020 | 6.2 | Process M&E |
| 30 | Chemical Dosing Equipment Installation |  | 70d? | 2027-10-20 | 2028-01-08 | 25, 6 | 2027-10-20 | 2028-01-08 | 70d? | 194d | 104d | ME-030 | 6.3 | Process M&E |
| 31 | Filter Media / Underdrain Equipment |  | 50d? | 2028-01-14 | 2028-03-11 | 17, 6 | 2028-01-03 | 2028-02-29 | 50d? | 140d | 50d | ME-040 | 6.4 | Process M&E |
| 32 | Electrical Installation / MCC / Cabling |  | 100d? | 2027-08-11 | 2027-12-04 | 24, 8 | 2027-08-11 | 2027-12-04 | 100d? | 134d |  | ME-050 | 6.5 | Process M&E |
| 33 | Instrumentation & SCADA Installation |  | 90d? | 2028-05-10 | 2028-08-22 | 28, 32, 7 | 2028-04-28 | 2028-08-10 | 90d? | 0d |  | ME-060 | 6.6 | Process M&E |
| 34 | Salakham Site Preparation / Excavation |  | 40d? | 2026-09-24 | 2026-11-09 | 3 | 2026-09-24 | 2026-11-09 | 40d? | 344d | 0d | SAL-010 | 7.1 | Salakham |
| 35 | 7,100 m³ Reservoir RC Works |  | 180d? | 2026-11-10 | 2027-06-07 | 34 | 2026-11-10 | 2027-06-07 | 180d? | 344d | 115d | SAL-020 | 7.2 | Salakham |
| 36 | Salakham Pump Room |  | 90d? | 2026-10-29 | 2027-02-10 | 34SS+30d | 2026-10-29 | 2027-02-10 | 90d? | 444d | 215d | SAL-030 | 7.3 | Salakham |
| 37 | Salakham M&E Installation |  | 80d? | 2027-10-20 | 2028-01-20 | 35, 36, 6 | 2027-10-20 | 2028-01-20 | 80d? | 229d |  | SAL-040 | 7.4 | Salakham |
| 38 | 22-kV Route Survey / Permits |  | 45d? | 2026-09-24 | 2026-11-14 | 2 | 2026-09-24 | 2026-11-14 | 45d? | 304d | 0d | PWR-010 | 8.1 | Power |
| 39 | Pole / Foundation Works |  | 100d? | 2026-11-16 | 2027-03-11 | 38 | 2026-11-16 | 2027-03-11 | 100d? | 304d | 0d | PWR-020 | 8.2 | Power |
| 40 | 22-kV Line Installation |  | 120d? | 2027-03-12 | 2027-07-29 | 39 | 2027-03-12 | 2027-07-29 | 120d? | 304d | 10d | PWR-030 | 8.3 | Power |
| 41 | Receiving Equipment / Energization |  | 30d? | 2027-08-11 | 2027-09-14 | 40, 8 | 2027-08-11 | 2027-09-14 | 30d? | 294d |  | PWR-040 | 8.4 | Power |
| 42 | Mechanical Pre-Commissioning |  | 25d? | 2028-05-10 | 2028-06-07 | 28, 29, 30, 31 | 2028-04-28 | 2028-05-26 | 25d? | 90d |  | COMM-010 | 9.1 | Commissioning |
| 43 | Electrical / I&C Pre-Commissioning |  | 25d? | 2028-08-23 | 2028-09-20 | 33, 41 | 2028-08-11 | 2028-09-08 | 25d? | 0d |  | COMM-020 | 9.2 | Commissioning |
| 44 | Dry Commissioning |  | 20d? | 2028-09-21 | 2028-10-13 | 42, 43 | 2028-09-09 | 2028-10-02 | 20d? | 0d |  | COMM-030 | 9.3 | Commissioning |
| 45 | Wet Commissioning / Process Start-Up |  | 30d? | 2028-10-14 | 2028-11-17 | 44, 23, 37 | 2028-10-03 | 2028-11-06 | 30d? | 0d |  | COMM-040 | 9.4 | Commissioning |
| 46 | Performance / Water Quality Testing |  | 30d? | 2028-11-18 | 2028-12-22 | 45 | 2028-11-07 | 2028-12-11 | 30d? | 0d |  | COMM-050 | 9.5 | Commissioning |
| 47 | Punch List / Rectification |  | 30d? | 2028-12-23 | 2029-01-26 | 46 | 2028-12-12 | 2029-01-15 | 30d? | 0d |  | COMM-060 | 9.6 | Commissioning |
| 48 | Training / O&M Documents |  | 20d? | 2028-10-14 | 2028-11-06 | 45SS | 2028-10-03 | 2028-10-25 | 20d? | 70d |  | COMM-070 | 9.7 | Commissioning |
| 49 | Taking Over / Completion Milestone | milestone | 0d? | 2029-01-26 | 2029-01-26 | 47, 48 | 2029-01-15 | 2029-01-15 | 0d? | 0d |  | COMM-080 | 9.8 | Commissioning |

Notes:
- 1: Activity ID: PREL-010 / WBS: 1.1 / Workstream: Preliminaries
- 2: Activity ID: PREL-020 / WBS: 1.2 / Workstream: Preliminaries
- 3: Activity ID: PREL-030 / WBS: 1.3 / Workstream: Preliminaries
- 4: Activity ID: DES-010 / WBS: 2.1 / Workstream: Design & Procurement
- 5: Activity ID: DES-020 / WBS: 2.2 / Workstream: Design & Procurement
- 6: Activity ID: PROC-010 / WBS: 2.3 / Workstream: Design & Procurement
- 7: Activity ID: PROC-020 / WBS: 2.4 / Workstream: Design & Procurement
- 8: Activity ID: PROC-030 / WBS: 2.5 / Workstream: Design & Procurement
- 9: Activity ID: WTP-CIV-010 / WBS: 3.1 / Workstream: Chinaimo WTP
- 10: Activity ID: WTP-CIV-020 / WBS: 3.2 / Workstream: Chinaimo WTP
- 11: Activity ID: WTP-CIV-030 / WBS: 3.3 / Workstream: Chinaimo WTP
- 12: Activity ID: WTP-CIV-040 / WBS: 3.4 / Workstream: Chinaimo WTP
- 13: Activity ID: WTP-CIV-050 / WBS: 3.5 / Workstream: Chinaimo WTP
- 14: Activity ID: WTP-CIV-060 / WBS: 3.6 / Workstream: Chinaimo WTP / Assessment Scenario C: +10 working days.
- 15: Activity ID: WTP-CIV-070 / WBS: 3.7 / Workstream: Chinaimo WTP
- 16: Activity ID: WTP-CIV-080 / WBS: 3.8 / Workstream: Chinaimo WTP
- 17: Activity ID: WTP-CIV-090 / WBS: 3.9 / Workstream: Chinaimo WTP
- 18: Activity ID: RES-010 / WBS: 4.1 / Workstream: Chinaimo Reservoir
- 19: Activity ID: RES-020 / WBS: 4.2 / Workstream: Chinaimo Reservoir
- 20: Activity ID: RES-030 / WBS: 4.3 / Workstream: Chinaimo Reservoir
- 21: Activity ID: RES-040 / WBS: 4.4 / Workstream: Chinaimo Reservoir
- 22: Activity ID: RES-050 / WBS: 4.5 / Workstream: Chinaimo Reservoir
- 23: Activity ID: RES-060 / WBS: 4.6 / Workstream: Chinaimo Reservoir
- 24: Activity ID: BLDG-010 / WBS: 5.1 / Workstream: Buildings
- 25: Activity ID: BLDG-020 / WBS: 5.2 / Workstream: Buildings
- 26: Activity ID: BLDG-030 / WBS: 5.3 / Workstream: Buildings / Assessment Scenario C: +15 working days.
- 27: Activity ID: BLDG-040 / WBS: 5.4 / Workstream: Buildings
- 28: Activity ID: ME-010 / WBS: 6.1 / Workstream: Process M&E
- 29: Activity ID: ME-020 / WBS: 6.2 / Workstream: Process M&E
- 30: Activity ID: ME-030 / WBS: 6.3 / Workstream: Process M&E
- 31: Activity ID: ME-040 / WBS: 6.4 / Workstream: Process M&E
- 32: Activity ID: ME-050 / WBS: 6.5 / Workstream: Process M&E
- 33: Activity ID: ME-060 / WBS: 6.6 / Workstream: Process M&E
- 34: Activity ID: SAL-010 / WBS: 7.1 / Workstream: Salakham
- 35: Activity ID: SAL-020 / WBS: 7.2 / Workstream: Salakham
- 36: Activity ID: SAL-030 / WBS: 7.3 / Workstream: Salakham
- 37: Activity ID: SAL-040 / WBS: 7.4 / Workstream: Salakham
- 38: Activity ID: PWR-010 / WBS: 8.1 / Workstream: Power
- 39: Activity ID: PWR-020 / WBS: 8.2 / Workstream: Power
- 40: Activity ID: PWR-030 / WBS: 8.3 / Workstream: Power
- 41: Activity ID: PWR-040 / WBS: 8.4 / Workstream: Power
- 42: Activity ID: COMM-010 / WBS: 9.1 / Workstream: Commissioning
- 43: Activity ID: COMM-020 / WBS: 9.2 / Workstream: Commissioning
- 44: Activity ID: COMM-030 / WBS: 9.3 / Workstream: Commissioning
- 45: Activity ID: COMM-040 / WBS: 9.4 / Workstream: Commissioning
- 46: Activity ID: COMM-050 / WBS: 9.5 / Workstream: Commissioning
- 47: Activity ID: COMM-060 / WBS: 9.6 / Workstream: Commissioning
- 48: Activity ID: COMM-070 / WBS: 9.7 / Workstream: Commissioning
- 49: Activity ID: COMM-080 / WBS: 9.8 / Workstream: Commissioning
